# wbs-barbooking

Schedule from MS Project, 2023-01-24 to 2023-03-24, costs in €.

## Calendars

- Standard: Mon-Fri 09:00-13:00, 14:00-18:00; Sat-Sun off.

## Resources

| Resource | Rate |
| --- | --- |
| Mirko Cerati | 16 |
| Gioia Bertin | 50 |
| Gabriela Badarau | 25 |
| Lorenzo Marcato | 16 |
| Lo |  |

## Schedule

| ID | WBS | Task | Duration | Start | Finish | Predecessors | Total slack | Free slack | Resources | Work | Cost |
| --- | --- | --- | --- | --- | --- | --- | --- | --- | --- | --- | --- |
| 1 | 1 | **Bar Booking** | 43.25d | 2023-01-24 | 2023-03-24 |  | 0d |  |  | 828h | 22,080 |
| 2 | 1.1 | **AVVIO** | 5d | 2023-01-24 | 2023-01-30 |  | 0d |  |  | 120h | 3,568 |
| 3 | 1.1.1 | **Documenti iniziali di progetto** | 5d | 2023-01-24 | 2023-01-30 |  | 0d |  |  | 120h | 3,568 |
| 4 | 1.1.1.1 | Studio fattibilità | 2d | 2023-01-24 | 2023-01-25 |  | 0d |  | Gioia Bertin; Gabriela Badarau; Lorenzo Marcato; Mirko Cerati | 64h | 1,712 |
| 5 | 1.1.1.2 | Analisi contesto | 2d | 2023-01-26 | 2023-01-27 | 4 | 1d |  | Mirko Cerati | 16h | 256 |
| 6 | 1.1.1.3 | Analisi dei rischi | 2d | 2023-01-26 | 2023-01-27 | 4 | 1d |  | Gabriela Badarau | 16h | 400 |
| 7 | 1.1.1.4 | Project Charter | 3d | 2023-01-26 | 2023-01-30 | 4 | 0d |  | Gioia Bertin | 24h | 1,200 |
| 8 | 1.2 | **PIANIFICAZIONE** | 6d | 2023-01-31 | 2023-02-07 | 2 | 0d |  |  | 96h | 3,056 |
| 9 | 1.2.1 | **Documenti iniziali di progetto** | 6d | 2023-01-31 | 2023-02-07 | 3 | 0d |  |  | 64h | 2,000 |
| 10 | 1.2.1.1 | WBS - WP | 1d | 2023-01-31 | 2023-01-31 | 7 | 1d |  | Gioia Bertin | 8h | 400 |
| 11 | 1.2.1.2 | GANTT | 2d | 2023-01-31 | 2023-02-01 | 6 | 0d |  | Gabriela Badarau | 16h | 400 |
| 12 | 1.2.1.3 | RAM | 1d | 2023-02-02 | 2023-02-02 | 10, 11 | 0d |  | Gabriela Badarau; Gioia Bertin | 16h | 600 |
| 13 | 1.2.1.4 | Stime di costo (BCWS) | 3d | 2023-02-03 | 2023-02-07 | 12 | 0d |  | Gabriela Badarau | 24h | 600 |
| 14 | 1.2.2 | Anilisi statistica tramite sondaggio | 2d | 2023-02-03 | 2023-02-06 | 12 | 1d | 0d | Gioia Bertin; Lorenzo Marcato | 32h | 1,056 |
| 15 | 1.3 | **REALIZZAZIONE** | 27.25d | 2023-02-07 | 2023-03-16 |  | 0d |  |  | 436h | 10,920 |
| 16 | 1.3.1 | Documenti di sviluppo prodotto | 2d | 2023-02-08 | 2023-02-09 | 13, 14, 5 | 0d |  | Gabriela Badarau; Gioia Bertin; Mirko Cerati | 48h | 1,456 |
| 17 | 1.3.2 | requisiti!! | 2d | 2023-02-10 | 2023-02-13 | 16 | 22.25d |  | Gabriela Badarau; Gioia Bertin | 32h | 1,200 |
| 18 | 1.3.3 | **Sviluppo prodotto** | 27.25d | 2023-02-07 | 2023-03-16 |  | 0d |  |  | 356h | 8,264 |
| 19 | 1.3.3.1 | **Creazione del sito web** | 11.25d | 2023-02-07 | 2023-02-22 |  | 0d |  |  | 172h | 4,384 |
| 20 | 1.3.3.1.1 | **Configurazione del dominio** | 4.25d | 2023-02-07 | 2023-02-13 |  | 0d |  |  | 28h | 720 |
| 21 | 1.3.3.1.1.1 | Registrazione | 8h | 2023-02-10 | 2023-02-10 | 16 | 0d |  | Mirko Cerati | 8h | 128 |
| 22 | 1.3.3.1.1.2 | Impostazione DNS | 8h | 2023-02-07 | 2023-02-07 | 14 | 3d |  | Lorenzo Marcato; Gioia Bertin | 16h | 528 |
| 23 | 1.3.3.1.1.3 | Controllo connession SSL | 2h | 2023-02-13 | 2023-02-13 | 21, 22 | 0d |  | Lorenzo Marcato; Mirko Cerati | 4h | 64 |
| 24 | 1.3.3.1.2 | **Organizzazione spazio web** | 7d | 2023-02-13 | 2023-02-22 | 20 | 0d |  |  | 144h | 3,664 |
| 25 | 1.3.3.1.2.1 | Configurazione tema | 5d | 2023-02-13 | 2023-02-20 | 23, 20 | 0d |  | Mirko Cerati | 40h | 640 |
| 26 | 1.3.3.1.2.2 | Creazione logo | 2d | 2023-02-13 | 2023-02-15 | 20 | 0d |  | Lorenzo Marcato | 16h | 256 |

| ID | WBS | Task | Duration | Start | Finish | Predecessors | Total slack | Resources | Work | Cost |
| --- | --- | --- | --- | --- | --- | --- | --- | --- | --- | --- |
| 27 | 1.3.3.1.2.3 | **Inserimento dei contenuti** | 5d | 2023-02-15 | 2023-02-22 |  | 0d |  | 80h | 2,640 |
| 28 | 1.3.3.1.2.3.1 | Home Page | 3d | 2023-02-15 | 2023-02-20 | 22, 26 | 0d | Lorenzo Marcato; Gioia Bertin | 48h | 1,584 |
| 29 | 1.3.3.1.2.3.2 | Prodotti | 2d | 2023-02-20 | 2023-02-22 | 28 | 0d | Gioia Bertin | 16h | 800 |
| 30 | 1.3.3.1.2.3.3 | Info (cookie, privacy etc..) | 2d | 2023-02-20 | 2023-02-22 | 25 | 0d | Mirko Cerati | 16h | 256 |
| 31 | 1.3.3.1.2.4 | Configurazione metodi di pagamento | 1d | 2023-02-20 | 2023-02-21 | 28 | 1d | Lorenzo Marcato | 8h | 128 |
| 32 | 1.3.3.2 | **INTEGRAZIONE CON DATABASE** | 11d | 2023-02-22 | 2023-03-09 | 19 | 0d |  | 88h | 2,200 |
| 33 | 1.3.3.2.1 | **Progettazione del database** | 6d | 2023-02-22 | 2023-03-02 |  | 0d |  | 48h | 1,200 |
| 34 | 1.3.3.2.1.1 | schema concettuale | 4d | 2023-02-22 | 2023-02-28 | 16 | 0d | Gabriela Badarau | 32h | 800 |
| 35 | 1.3.3.2.1.2 | schema logico | 2d | 2023-02-28 | 2023-03-02 | 34 | 0d | Gabriela Badarau | 16h | 400 |
| 36 | 1.3.3.2.2 | **creazione e implementazione database** | 5d | 2023-03-02 | 2023-03-09 |  | 0d |  | 40h | 1,000 |
| 37 | 1.3.3.2.2.1 | gestione materie prime | 2d | 2023-03-02 | 2023-03-06 | 35 | 0d | Gabriela Badarau | 16h | 400 |
| 38 | 1.3.3.2.2.2 | gestione prodotti finiti | 2d | 2023-03-06 | 2023-03-08 | 37 | 0d | Gabriela Badarau | 16h | 400 |
| 39 | 1.3.3.2.2.3 | contatti fornitori | 1d | 2023-03-08 | 2023-03-09 | 38 | 0d | Gabriela Badarau | 8h | 200 |
| 40 | 1.3.3.3 | **INTEGRAZIONE CASSA** | 5d | 2023-03-09 | 2023-03-16 | 32 | 0d |  | 96h | 1,680 |
| 41 | 1.3.3.3.1 | creazione profilo amministratore-cassiere | 1d | 2023-03-09 | 2023-03-10 | 30 | 0d | Mirko Cerati | 8h | 128 |
| 42 | 1.3.3.3.2 | implementazione metodi pagamento | 1d | 2023-03-09 | 2023-03-10 | 31 | 0d | Lorenzo Marcato | 8h | 128 |
| 43 | 1.3.3.3.3 | **INTEGRAZIONE DI ANALISI E STATISTICA** | 2d | 2023-03-09 | 2023-03-13 | 32 | 3d |  | 16h | 400 |
| 44 | 1.3.3.3.3.1 | adozione programmi per report periodici | 2d | 2023-03-09 | 2023-03-13 |  | 3d | Gabriela Badarau | 16h | 400 |
| 45 | 1.3.3.3.4 | **RIORGANIZZAZIONE RISORSE UMANE** | 4d | 2023-03-10 | 2023-03-16 |  | 0d |  | 64h | 1,024 |
| 46 | 1.3.3.3.4.1 | code separate | 4d | 2023-03-10 | 2023-03-16 | 42 | 0d | Lorenzo Marcato | 32h | 512 |
| 47 | 1.3.3.3.4.2 | consegna in classe | 4d | 2023-03-10 | 2023-03-16 | 41 | 0d | Mirko Cerati | 32h | 512 |
| 48 | 1.4 | **COLLAUDO - CHIUSURA** | 6d | 2023-03-16 | 2023-03-24 | 15 | 0d |  | 176h | 4,536 |
| 49 | 1.4.1 | Verbali riunioni | 2d | 2023-03-16 | 2023-03-20 | 44 | 1d | Gabriela Badarau | 16h | 400 |
| 50 | 1.4.2 | Documenti di revisione | 2d | 2023-03-16 | 2023-03-20 |  | 1d | Gioia Bertin | 16h | 800 |
| 51 | 1.4.3 | Testing | 3d | 2023-03-16 | 2023-03-21 | 46, 47 | 0d | Lorenzo Marcato; Mirko Cerati | 48h | 768 |
| 52 | 1.4.4 | Chiusura | 2d | 2023-03-21 | 2023-03-23 | 50, 49, 51 | 0d | Gabriela Badarau; Gioia Bertin; Lorenzo Marcato; Mirko Cerati | 64h | 1,712 |
| 53 | 1.4.5 | Presentazione e consegna del prodotto finale | 1d | 2023-03-23 | 2023-03-24 | 52 | 0d | Gabriela Badarau; Gioia Bertin; Lorenzo Marcato; Mirko Cerati | 32h | 856 |
